# Proyecto CMH

Schedule from MS Project, 2016-08-29 to 2016-11-24, costs in $, A marks actual dates.

## Calendars

- Estándar: Mon-Fri 09:00-13:00, 15:00-19:00; Sat-Sun off. Exceptions (off unless hours are given): 2016-09-19 (Día de las glorias del ejército), 2016-10-10 (Encuentro de dos mundo), 2016-10-31 (Día nacional de las iglesias evangélicas y protestantes), 2016-11-01 (Día de todos los santos).

## Resources

| Resource | Rate |
| --- | --- |
| Pablo de la Sotta | 13000 |
| Tomás Muñiz | 13000 |
| Gonzalo López | 13000 |
| Fabián Jaque | 13000 |
| Elías Baeza | 13000 |

## Schedule

| ID | WBS | Task | Type | Duration | Start | Finish | Predecessors | Complete | Constraint | Resources | Work | Actual work | Cost | Actual cost |
| --- | --- | --- | --- | --- | --- | --- | --- | --- | --- | --- | --- | --- | --- | --- |
| 1 | 1 | **Iteración 1: Planificación del proyecto** |  | 19d | 2016-08-29 A | 2016-09-25 A |  | 100% |  |  | 336h | 336h | 4,368,000 | 4,368,000 |
| 2 | 1.1 | **Análisis y planificación del proyecto** |  | 12d | 2016-08-29 A | 2016-09-13 A |  | 100% |  |  | 248h | 248h | 3,224,000 | 3,224,000 |
| 3 | 1.1.1 | **Definición del proyecto** |  | 10d | 2016-08-29 A | 2016-09-09 A |  | 100% |  |  | 224h | 224h | 2,912,000 | 2,912,000 |
| 4 | 1.1.1.1 | Elaborar alcance |  | 5d | 2016-08-29 A | 2016-09-02 A |  | 100% |  | Fabián Jaque; Gonzalo López | 80h | 80h | 1,040,000 | 1,040,000 |
| 5 | 1.1.1.2 | Elaborar ERS |  | 5d | 2016-08-29 A | 2016-09-02 A |  | 100% |  | Tomás Muñiz | 40h | 40h | 520,000 | 520,000 |
| 6 | 1.1.1.3 | Elaborar modelos de proceso |  | 10d | 2016-08-29 A | 2016-09-09 A |  | 100% |  | Pablo de la Sotta | 80h | 80h | 1,040,000 | 1,040,000 |
| 7 | 1.1.1.4 | Establecer objetivos |  | 3d | 2016-08-29 A | 2016-08-31 A |  | 100% |  | Elías Baeza | 24h | 24h | 312,000 | 312,000 |
| 8 | 1.1.1.5 | Entrega documento alcance | milestone | 0d | 2016-09-02 A | 2016-09-02 A | 4 | 100% |  |  |  |  |  |  |
| 9 | 1.1.1.6 | Entrega ERS | milestone | 0d | 2016-09-02 A | 2016-09-02 A | 5 | 100% |  |  |  |  |  |  |
| 10 | 1.1.1.7 | Entregar modelos de proceso | milestone | 0d | 2016-09-09 A | 2016-09-09 A | 6 | 100% |  |  |  |  |  |  |
| 11 | 1.1.1.8 | Entrega matriz de objetivos | milestone | 0d | 2016-08-31 A | 2016-08-31 A | 7 | 100% |  |  |  |  |  |  |
| 12 | 1.1.2 | **Organización del proyecto** |  | 2d | 2016-09-12 A | 2016-09-13 A | 3 | 100% |  |  | 24h | 24h | 312,000 | 312,000 |
| 13 | 1.1.2.1 | Elaborar estructura organizacional |  | 1d | 2016-09-12 A | 2016-09-12 A |  | 100% |  | Gonzalo López | 8h | 8h | 104,000 | 104,000 |
| 14 | 1.1.2.2 | Establecer responsables |  | 1d | 2016-09-12 A | 2016-09-12 A |  | 100% |  | Tomás Muñiz | 8h | 8h | 104,000 | 104,000 |
| 15 | 1.1.2.3 | Establecer interfaces e interacciones |  | 1d | 2016-09-13 A | 2016-09-13 A | 14 | 100% |  | Tomás Muñiz | 8h | 8h | 104,000 | 104,000 |
| 16 | 1.1.2.4 | Entregar documento organizacional | milestone | 0d | 2016-09-13 A | 2016-09-13 A | 13, 14, 15 | 100% |  |  |  |  |  |  |
| 17 | 1.2 | **Planificación de gestión** |  | 3d | 2016-09-14 A | 2016-09-16 A | 12 | 100% |  |  | 48h | 48h | 624,000 | 624,000 |
| 18 | 1.2.1 | Definir restricciones |  | 2d | 2016-09-14 A | 2016-09-15 A |  | 100% |  | Elías Baeza | 16h | 16h | 208,000 | 208,000 |
| 19 | 1.2.2 | Elaborar plan de gestión de riesgos |  | 2d | 2016-09-14 A | 2016-09-15 A |  | 100% |  | Fabián Jaque | 16h | 16h | 208,000 | 208,000 |
| 20 | 1.2.3 | Definir condiciones asumidas |  | 1d | 2016-09-14 A | 2016-09-14 A |  | 100% |  | Pablo de la Sotta | 8h | 8h | 104,000 | 104,000 |
| 21 | 1.2.4 | Elaborar mecanismos de control y ajuste |  | 1d | 2016-09-16 A | 2016-09-16 A | 18 | 100% |  | Elías Baeza | 8h | 8h | 104,000 | 104,000 |
| 22 | 1.2.5 | Entregar plan de gestión | milestone | 0d | 2016-09-16 A | 2016-09-16 A | 20, 21, 19 | 100% |  |  |  |  |  |  |
| 23 | 1.3 | **Recursos humanos** |  | 4d | 2016-09-20 A | 2016-09-23 A | 17 | 100% |  |  | 40h | 40h | 520,000 | 520,000 |
| 24 | 1.3.1 | Planificar distribución de recursos humanos |  | 1d | 2016-09-20 A | 2016-09-20 A |  | 100% |  | Fabián Jaque | 8h | 8h | 104,000 | 104,000 |
| 25 | 1.3.2 | Establecer dependencias |  | 1d | 2016-09-20 A | 2016-09-20 A |  | 100% |  | Tomás Muñiz | 8h | 8h | 104,000 | 104,000 |
| 26 | 1.3.3 | Elaborar cronograma |  | 3d | 2016-09-21 A | 2016-09-23 A | 24 | 100% |  | Fabián Jaque | 24h | 24h | 312,000 | 312,000 |
| 27 | 1.3.4 | Entregar plan de recursos humanos | milestone | 0d | 2016-09-23 A | 2016-09-23 A | 25, 26 | 100% |  |  |  |  |  |  |
| 28 | 1.4 | Entregar plan de proyecto | milestone | 0d | 2016-09-25 A | 2016-09-25 A |  | 100% | finish no earlier than 2016-09-25 |  |  |  |  |  |

| ID | WBS | Task | Type | Duration | Start | Finish | Predecessors | Complete | Remaining | Total slack | Free slack | Resources | Work | Actual work | Cost | Actual cost |
| --- | --- | --- | --- | --- | --- | --- | --- | --- | --- | --- | --- | --- | --- | --- | --- | --- |
| 29 | 2 | **Iteración 2: Diseño del sistema** |  | 28d | 2016-09-26 A | 2016-11-07 | 1 | 29% | 19.81d | 0d |  |  | 360h | 160h | 4,680,000 | 2,080,000 |
| 30 | 2.1 | **Arquitectura** |  | 7d | 2016-09-26 A | 2016-10-04 |  | 99% | 0d | 21d |  |  | 136h | 136h | 1,768,000 | 1,768,000 |
| 31 | 2.1.1 | Elaborar casos de uso |  | 3d | 2016-09-26 A | 2016-09-28 A |  | 100% |  |  |  | Fabián Jaque; Pablo de la Sotta | 48h | 48h | 624,000 | 624,000 |
| 32 | 2.1.2 | Diagramar casos de uso |  | 1d | 2016-09-29 A | 2016-09-29 A | 31 | 100% |  |  |  | Elías Baeza | 8h | 8h | 104,000 | 104,000 |
| 33 | 2.1.3 | Elaborar especificación de casos de uso |  | 4d | 2016-09-29 A | 2016-10-04 A | 31 | 100% |  |  |  | Gonzalo López; Tomás Muñiz | 64h | 64h | 832,000 | 832,000 |
| 34 | 2.1.4 | Elaborar diagrama de despliegue |  | 2d | 2016-09-29 A | 2016-09-30 A | 31 | 100% |  |  |  | Pablo de la Sotta | 16h | 16h | 208,000 | 208,000 |
| 35 | 2.1.5 | Entrega documento arquitectura | milestone | 0d | 2016-10-04 | 2016-10-04 | 33, 34 |  |  | 21d |  |  |  |  |  |  |
| 36 | 2.2 | **Modelo de datos** |  | 4d | 2016-10-03 A | 2016-10-06 |  | 75% | 1d | 0d |  |  | 24h | 24h | 312,000 | 312,000 |
| 37 | 2.2.1 | Elaborar modelo de datos |  | 3d | 2016-10-03 A | 2016-10-05 A |  | 100% |  |  |  | Pablo de la Sotta | 24h | 24h | 312,000 | 312,000 |
| 38 | 2.2.2 | Elaborar diccionario de datos |  | 1d | 2016-10-06 | 2016-10-06 | 37 |  |  | 0d |  |  |  |  |  |  |
| 39 | 2.2.3 | Entregar modelo de datos | milestone | 0d | 2016-10-06 | 2016-10-06 | 38 |  |  | 0d |  |  |  |  |  |  |
| 40 | 2.3 | **Módulo Core** |  | 5d | 2016-10-07 | 2016-10-14 | 36 |  |  | 0d |  |  | 200h |  | 2,600,000 |  |
| 41 | 2.3.1 | Diagramar clases |  | 2d | 2016-10-07 | 2016-10-11 |  |  |  | 0d |  | Elías Baeza; Fabián Jaque; Gonzalo López; Pablo de la Sotta; Tomás Muñiz | 80h |  | 1,040,000 |  |
| 42 | 2.3.2 | Diseño vistas y procedimientos almacenados |  | 1d | 2016-10-12 | 2016-10-12 | 41 |  |  | 0d |  | Fabián Jaque; Pablo de la Sotta | 16h |  | 208,000 |  |
| 43 | 2.3.3 | Diagramar secuencias |  | 3d | 2016-10-12 | 2016-10-14 | 41 |  |  | 0d |  | Elías Baeza; Gonzalo López; Tomás Muñiz | 72h |  | 936,000 |  |
| 44 | 2.3.4 | Elaborar casos prueba |  | 2d | 2016-10-13 | 2016-10-14 | 42 |  |  | 0d |  | Fabián Jaque; Pablo de la Sotta | 32h |  | 416,000 |  |
| 45 | 2.3.5 | Entregar documentación WS | milestone | 0d | 2016-10-14 | 2016-10-14 | 43, 44 |  |  | 0d |  |  |  |  |  |  |
| 46 | 2.4 | **Construcción Core** |  | 1d | 2016-10-14 | 2016-10-17 | 40 |  |  | 0d |  |  |  |  |  |  |
| 47 | 2.4.1 | Módulo acceso a core |  | 1d | 2016-10-17 | 2016-10-17 |  |  |  | 0d |  |  |  |  |  |  |
| 48 | 2.4.2 | Módulo reglas de negocio |  | 1d | 2016-10-17 | 2016-10-17 |  |  |  | 0d |  |  |  |  |  |  |
| 49 | 2.4.3 | Construcción vistas y procedimientos almacenados |  | 1d | 2016-10-17 | 2016-10-17 |  |  |  | 0d |  |  |  |  |  |  |
| 50 | 2.4.4 | Entrega módulo core | milestone | 0d | 2016-10-14 | 2016-10-14 |  |  |  | 1d |  |  |  |  |  |  |
| 51 | 2.5 | **Aplicación Web** |  | 5d | 2016-10-07 A | 2016-10-14 | 36 | 13% | 4.38d | 14d |  |  |  |  |  |  |
| 52 | 2.5.1 | Diagramar clases |  | 1d | 2016-10-07 | 2016-10-07 |  |  |  | 0d |  |  |  |  |  |  |
| 53 | 2.5.2 | Diagramar secuencias |  | 3d | 2016-10-11 | 2016-10-13 | 52 |  |  | 0d |  |  |  |  |  |  |
| 54 | 2.5.3 | Elaborar casos prueba |  | 1d | 2016-10-14 | 2016-10-14 | 53 |  |  | 14d | 0d |  |  |  |  |  |
| 55 | 2.5.4 | Bocetos aplicación |  | 1d | 2016-10-11 A | 2016-10-14 | 53 | 75% | 0.25d | 14.75d |  |  |  |  |  |  |
| 56 | 2.5.5 | Entregar documentación aplicación web | milestone | 0d | 2016-10-14 | 2016-10-14 | 54 |  |  | 14d |  |  |  |  |  |  |

| ID | WBS | Task | Type | Duration | Start | Finish | Predecessors | Total slack | Constraint |
| --- | --- | --- | --- | --- | --- | --- | --- | --- | --- |
| 57 | 2.6 | **Terminal** |  | 9d | 2016-10-18 | 2016-10-28 | 46 | 0d |  |
| 58 | 2.6.1 | Diagramar clases |  | 2d | 2016-10-18 | 2016-10-19 |  | 0d |  |
| 59 | 2.6.2 | Diagramar secuencias |  | 5d | 2016-10-20 | 2016-10-26 | 58 | 0d |  |
| 60 | 2.6.3 | Elaborar casos prueba |  | 2d | 2016-10-27 | 2016-10-28 | 59 | 0d |  |
| 61 | 2.6.4 | Bocetos terminal |  | 2d | 2016-10-27 | 2016-10-28 | 59 | 0d |  |
| 62 | 2.6.5 | Entregar documentación Website | milestone | 0d | 2016-10-28 | 2016-10-28 | 60, 61 | 0d |  |
| 63 | 2.7 | **WS Aseguradora** |  | 4d | 2016-11-02 | 2016-11-07 | 57 | 0d |  |
| 64 | 2.7.1 | Diagramar clases |  | 1d | 2016-11-02 | 2016-11-02 |  | 0d |  |
| 65 | 2.7.2 | Diagramar secuencias |  | 2d | 2016-11-03 | 2016-11-04 | 64 | 0d |  |
| 66 | 2.7.3 | Elaborar casos de prueba |  | 1d | 2016-11-07 | 2016-11-07 | 65 | 0d |  |
| 67 | 2.7.4 | Elaborar modelo de datos |  | 1d | 2016-11-07 | 2016-11-07 | 65 | 0d |  |
| 68 | 2.7.5 | Entregar documentación WS Aseguradora | milestone | 0d | 2016-11-07 | 2016-11-07 | 66, 67 | 0d |  |
| 69 | 2.8 | Entregar diseño del sistema | milestone | 0d | 2016-10-30 | 2016-10-30 |  | 4d | start no earlier than 2016-10-30 |
| 70 | 3 | **Iteración 3: Construcción del sistema** |  | 13d | 2016-11-07 | 2016-11-24 | 29 | 0d |  |
| 71 | 3.1 | **Script BD** |  | 1d | 2016-11-07 | 2016-11-08 |  | 12d |  |
| 72 | 3.1.1 | Construcción script BD CMH |  | 1d | 2016-11-08 | 2016-11-08 |  | 12d |  |
| 73 | 3.1.2 | Entrega script BD CMH | milestone | 0d | 2016-11-07 | 2016-11-07 |  | 13d |  |
| 74 | 3.2 | **Aplicación Web** |  | 2d | 2016-11-07 | 2016-11-09 |  | 11d |  |
| 75 | 3.2.1 | Construcción web |  | 2d | 2016-11-08 | 2016-11-09 |  | 11d |  |
| 76 | 3.2.2 | Entrega módulo web | milestone | 0d | 2016-11-07 | 2016-11-07 |  | 13d |  |
| 77 | 3.3 | **Terminal** |  | 8d | 2016-11-07 | 2016-11-17 |  | 0d |  |
| 78 | 3.3.1 | Construcción módulo terminal |  | 8d | 2016-11-08 | 2016-11-17 |  | 0d |  |
| 79 | 3.3.2 | Entrega módulo terminal | milestone | 0d | 2016-11-07 | 2016-11-07 |  | 8d |  |
| 80 | 3.4 | **WS Aseguradora** |  | 2d | 2016-11-17 | 2016-11-21 | 77 | 0d |  |
| 81 | 3.4.1 | Construcción script BD CMH |  | 1d | 2016-11-18 | 2016-11-18 |  | 1d |  |
| 82 | 3.4.2 | Construcción módulo aseguradora |  | 2d | 2016-11-18 | 2016-11-21 |  | 0d |  |
| 83 | 3.4.3 | Entrega script BD WS Aseguradora | milestone | 0d | 2016-11-17 | 2016-11-17 |  | 2d |  |
| 84 | 3.4.4 | Entrega módulo WS Aseguradora | milestone | 0d | 2016-11-17 | 2016-11-17 |  | 2d |  |

| ID | WBS | Task | Type | Duration | Start | Finish | Predecessors | Total slack | Constraint |
| --- | --- | --- | --- | --- | --- | --- | --- | --- | --- |
| 85 | 3.5 | **Pruebas de calidad** |  | 13d | 2016-11-08 | 2016-11-24 |  | 0d |  |
| 86 | 3.5.1 | Pruebas unitarias |  | 4d | 2016-11-08 | 2016-11-11 |  | 9d |  |
| 87 | 3.5.2 | Pruebas de integración |  | 2d | 2016-11-22 | 2016-11-23 | 77, 80 | 0d |  |
| 88 | 3.5.3 | Pruebas de aceptación |  | 1d | 2016-11-24 | 2016-11-24 | 87 | 0d |  |
| 89 | 3.6 | Entrega del sistema | milestone | 0d | 2016-11-20 | 2016-11-20 |  | 4d | start no earlier than 2016-11-20 |
